# WBS

Schedule from MS Project XML, 2018-02-01 to 2018-08-23, costs in $, A marks actual dates.

## Calendars

- Standard: Mon-Fri 08:00-12:00, 13:00-17:00; Sat-Sun off. Exceptions (off unless hours are given): 2018-03-03 to 2018-03-04 08:00-12:00, 13:00-17:00, 2018-04-14 to 2018-04-15 08:00-12:00, 13:00-17:00, 2018-04-21 to 2018-04-22 08:00-12:00, 13:00-17:00, 2018-04-28 08:00-12:00, 13:00-17:00.

## Resources

| Resource | Rate |
| --- | --- |
| Kouchakzadeh | 164000 |
| Saberi | 164000 |
| Moosareza | 164000 |

## Schedule

| ID | WBS | Task | Type | Duration | Start | Finish | Predecessors | Complete | Actual start | Actual finish | Constraint | Resources | Work | Actual work | Cost | Actual cost |
| --- | --- | --- | --- | --- | --- | --- | --- | --- | --- | --- | --- | --- | --- | --- | --- | --- |
| 1 | 1 | **فاز اول پروژه** |  | 24d | 2018-02-22 08:00 | 2018-03-04 17:00 A |  | 100% | 2018-02-01 08:00 |  |  |  | 21h | 21h | 3,444,000 | 3,444,000 |
| 2 | 1.1 | **تهیه پروپوزال** |  | 23d | 2018-03-02 08:00 | 2018-03-04 17:00 |  | 100% | 2018-02-01 08:00 | 2018-03-03 17:00 |  |  | 20h | 20h | 3,280,000 | 3,280,000 |
| 3 | 1.1.1 | اهداف و توجیه |  | 2h | 2018-03-01 08:00 A | 2018-03-01 10:00 A |  | 100% |  |  |  | Saberi; Kouchakzadeh; Moosareza | 2h | 2h | 328,000 | 328,000 |
| 4 | 1.1.2 | معرفی و مفاد قرارداد |  | 2h | 2018-03-01 08:00 A | 2018-03-01 10:00 A |  | 100% |  |  |  | Moosareza | 2h | 2h | 328,000 | 328,000 |
| 5 | 1.1.3 | **معرفی سیستم و توضیح تکنولوژی** |  | 2.12d | 2018-03-01 08:00 A | 2018-03-03 09:00 A |  | 100% |  |  |  |  | 5h | 5h | 820,000 | 820,000 |
| 6 | 1.1.3.1 | تهیه گزینه راه حل‌های تکنولوژی |  | 2h | 2018-03-01 08:00 A | 2018-03-02 09:00 A |  | 100% |  |  |  | Saberi | 2h | 2h | 328,000 | 328,000 |
| 7 | 1.1.3.2 | امکان سنجی گزینه ها |  | 2h | 2018-03-02 08:00 A | 2018-03-02 10:00 A | 6 | 100% |  |  |  | Saberi | 2h | 2h | 328,000 | 328,000 |
| 8 | 1.1.3.3 | انتخاب گزینه راه حل نهایی |  | 1h | 2018-03-03 08:00 A | 2018-03-03 09:00 A | 7 | 100% |  |  |  | Saberi | 1h | 1h | 164,000 | 164,000 |
| 9 | 1.1.4 | **پوشش نیازمندی‌های کارکردی و غیرکارکردی** |  | 1.25d | 2018-03-02 08:00 A | 2018-03-03 10:00 A |  | 100% |  |  |  |  | 4h | 4h | 656,000 | 656,000 |
| 10 | 1.1.4.1 | نیازمندی‌های کارکردی |  | 2h | 2018-03-02 08:00 A | 2018-03-02 10:00 A | 4 | 100% |  |  |  | Moosareza | 2h | 2h | 328,000 | 328,000 |
| 11 | 1.1.4.2 | نیازمندی‌های غیرکارکردی |  | 2h | 2018-03-03 08:00 A | 2018-03-03 10:00 A | 4 | 100% |  |  |  | Moosareza | 2h | 2h | 328,000 | 328,000 |
| 12 | 1.1.5 | برآورد زمانی |  | 1h | 2018-03-01 08:00 A | 2018-03-01 09:00 A |  | 100% |  |  |  | Kouchakzadeh | 1h | 1h | 164,000 | 164,000 |
| 13 | 1.1.6 | برآوردمالی |  | 3h | 2018-03-02 08:00 A | 2018-03-03 17:00 A |  | 100% |  |  | finish no earlier than 2018-03-03 17:00 | Kouchakzadeh | 3h | 3h | 492,000 | 492,000 |
| 14 | 1.1.7 | مراحل اجرای پروژه |  | 2h | 2018-03-03 08:00 A | 2018-03-03 10:00 A | 12 | 100% |  |  |  | Kouchakzadeh | 2h | 2h | 328,000 | 328,000 |
| 15 | 1.1.8 | معرفی اعضای گروه |  | 1h | 2018-02-01 08:00 A | 2018-02-28 17:00 A |  | 100% |  |  | finish no earlier than 2018-02-28 17:00 | Saberi | 1h | 1h | 164,000 | 164,000 |
| 16 | 1.2 | بازخوانی و تصحیح پروپوزال و آماده سازی نسخه نهایی |  | 1h | 2018-03-04 16:00 A | 2018-03-04 17:00 A | 2 | 100% |  |  | finish no earlier than 2018-03-04 17:00 | Moosareza | 1h | 1h | 164,000 | 164,000 |
| 17 | 1.3 | ارسال نسخه نهایی | milestone | 0h | 2018-03-04 08:00 A | 2018-03-04 08:00 A | 16 | 100% |  |  |  | Moosareza |  |  |  |  |
| 18 | 2 | **فاز دوم** |  | 4d | 2018-03-05 08:00 | 2018-03-15 17:00 A | 1 | 100% | 2018-03-12 08:00 |  |  |  | 25.5h | 25.5h | 4,182,000 | 4,182,000 |
| 19 | 2.1 | نصب نرم‌افزار MSP |  | 1h | 2018-03-12 08:00 A | 2018-03-12 09:00 A |  | 100% |  |  |  | Kouchakzadeh; Moosareza; Saberi | 3h | 3h | 492,000 | 492,000 |
| 20 | 2.2 | یادگیری کار با نرم‌افزار MSP |  | 3h | 2018-03-12 08:00 A | 2018-03-12 11:00 A | 19 | 100% |  |  |  | Kouchakzadeh; Moosareza; Saberi | 9h | 9h | 1,476,000 | 1,476,000 |
| 21 | 2.3 | **تهیه درخت شکست کار** |  | 2.38d | 2018-03-12 08:00 A | 2018-03-14 11:00 A | 20 | 100% |  |  |  |  | 9h | 9h | 1,476,000 | 1,476,000 |
| 22 | 2.3.1 | **زمانبندی انجام فازها** |  | 2.38d | 2018-03-12 08:00 A | 2018-03-14 11:00 A |  | 100% |  |  |  |  | 7h | 7h | 1,148,000 | 1,148,000 |
| 23 | 2.3.1.1 | زمانبندی فاز دوم |  | 2h | 2018-03-12 08:00 A | 2018-03-12 10:00 A |  | 100% |  |  |  | Moosareza; Saberi | 2h | 2h | 328,000 | 328,000 |
| 24 | 2.3.1.2 | زمانبندی فاز سوم |  | 1h | 2018-03-13 08:00 A | 2018-03-13 09:00 A |  | 100% |  |  | start no earlier than 2018-03-13 08:00 | Saberi | 1h | 1h | 164,000 | 164,000 |
| 25 | 2.3.1.3 | زمانبندی فاز چهارم |  | 1h | 2018-03-14 08:00 A | 2018-03-14 09:00 A |  | 100% |  |  | start no earlier than 2018-03-14 08:00 | Moosareza | 1h | 1h | 164,000 | 164,000 |
| 26 | 2.3.1.4 | زمانبندی فاز پنجم |  | 3h | 2018-03-14 08:00 A | 2018-03-14 11:00 A |  | 100% |  |  | start no earlier than 2018-03-15 08:00 | Kouchakzadeh | 3h | 3h | 492,000 | 492,000 |

| ID | WBS | Task | Type | Duration | Start | Finish | Predecessors | Complete | Actual start | Actual finish | Constraint | Resources | Work | Actual work | Cost | Actual cost |
| --- | --- | --- | --- | --- | --- | --- | --- | --- | --- | --- | --- | --- | --- | --- | --- | --- |
| 27 | 2.3.2 | **تعیین منابع انسانی** |  | 0.12d | 2018-03-12 08:00 A | 2018-03-12 17:00 |  | 100% |  | 2018-03-12 09:00 |  |  | 2h | 2h | 328,000 | 328,000 |
| 28 | 2.3.2.1 | مشخص کردن منبع ها |  | 1h | 2018-03-12 08:00 A | 2018-03-12 09:00 A |  | 100% |  |  |  | Saberi | 1h | 1h | 164,000 | 164,000 |
| 29 | 2.3.2.2 | تعیین هزینه ها |  | 1h | 2018-03-12 08:00 A | 2018-03-12 09:00 A | 28 | 100% |  |  | start no earlier than 2018-03-15 08:00 | Kouchakzadeh | 1h | 1h | 164,000 | 164,000 |
| 30 | 2.4 | بازبینی نهایی |  | 4h | 2018-03-15 08:00 A | 2018-03-15 17:00 A | 21 | 100% |  |  | finish no earlier than 2018-03-15 17:00 | Saberi; Kouchakzadeh; Moosareza | 4h | 4h | 656,000 | 656,000 |
| 31 | 2.5 | ساخت ریپازیتوری در گیت | manual | 0.5h | 2018-03-15 08:00 A | 2018-03-15 08:30 A |  | 100% |  |  |  | Saberi | 0.5h | 0.5h | 82,000 | 82,000 |
| 32 | 2.6 | ارسال نسخه نهایی | milestone | 0d | 2018-03-15 17:00 A | 2018-03-15 17:00 A | 31 | 100% |  |  | finish no earlier than 2018-03-15 17:00 | Moosareza |  |  |  |  |
| 33 | 3 | **فاز سوم** |  | 19d | 2018-04-11 08:00 A | 2018-04-30 17:00 A | 18 | 100% |  |  |  |  | 168h | 168h | 27,552,000 | 27,552,000 |
| 34 | 3.1 | **usecase تهیه** |  | 10d? | 2018-04-11 08:00 A | 2018-04-20 17:00 A |  | 100% |  |  |  |  | 80h | 80h | 13,120,000 | 13,120,000 |
| 35 | 3.1.1 | شناسایی نیازها |  | 4d | 2018-04-11 08:00 A | 2018-04-14 17:00 A |  | 100% |  |  | start no earlier than 2018-04-11 08:00 | Kouchakzadeh | 32h | 32h | 5,248,000 | 5,248,000 |
| 36 | 3.1.2 | کشیدن نمودار |  | 3d | 2018-04-15 08:00 A | 2018-04-17 17:00 A | 35 | 100% |  |  | start no earlier than 2018-04-14 08:00 | Moosareza | 24h | 24h | 3,936,000 | 3,936,000 |
| 37 | 3.1.3 | آمادی سازی و نوشتن نهایی |  | 3d? | 2018-04-18 08:00 A | 2018-04-20 17:00 A | 36 | 100% |  |  | finish no earlier than 2018-04-18 17:00 | Saberi | 24h | 24h | 3,936,000 | 3,936,000 |
| 38 | 3.2 | **تهیه تست** |  | 12d | 2018-04-18 08:00 A | 2018-04-30 17:00 A |  | 100% |  |  |  |  | 88h | 88h | 14,432,000 | 14,432,000 |
| 39 | 3.2.1 | یادگیری نیازمندیها |  | 3d | 2018-04-18 08:00 A | 2018-04-20 17:00 A |  | 100% |  |  | finish no earlier than 2018-04-20 17:00 |  |  |  |  |  |
| 40 | 3.2.2 | UI تهیه نمونه ای از |  | 6d | 2018-04-21 08:00 A | 2018-04-26 17:00 A |  | 100% |  |  | start no earlier than 2018-04-21 08:00 | Kouchakzadeh | 48h | 48h | 7,872,000 | 7,872,000 |
| 41 | 3.2.3 | تهیه تست |  | 4d | 2018-04-25 08:00 A | 2018-04-29 17:00 A |  | 100% |  |  | finish no earlier than 2018-04-29 17:00 | Saberi | 32h | 32h | 5,248,000 | 5,248,000 |
| 42 | 3.2.4 | UI امتحان روی |  | 1d | 2018-04-30 08:00 A | 2018-04-30 17:00 A | 41 | 100% |  |  | start no earlier than 2018-04-27 08:00 | Moosareza | 8h | 8h | 1,312,000 | 1,312,000 |
| 43 | 3.3 | ارسال نسخه نهایی | milestone | 0d | 2018-04-30 17:00 A | 2018-04-30 17:00 A | 34, 38 | 100% |  |  |  | Kouchakzadeh |  |  |  |  |
| 44 | 4 | **فاز چهارم** |  | 31d | 2018-04-30 08:00 | 2018-06-13 17:00 A | 33 | 100% | 2018-05-02 08:00 |  |  |  | 296h | 296h | 48,544,000 | 48,544,000 |
| 45 | 4.1 | **use case تکمیل** |  | 16d | 2018-05-02 08:00 A | 2018-05-23 17:00 A |  | 100% |  |  |  |  | 128h | 128h | 20,992,000 | 20,992,000 |
| 46 | 4.1.1 | تکمیل و تصحیح نیازهاو بررسی مجدد | manual | 4d | 2018-05-02 08:00 A | 2018-05-07 17:00 A |  | 100% |  |  |  | Kouchakzadeh | 32h | 32h | 5,248,000 | 5,248,000 |
| 47 | 4.1.2 | بازبینی و تکمیل نمودار | manual | 9d | 2018-05-08 08:00 A | 2018-05-18 17:00 A | 46 | 100% |  |  |  | Moosareza | 72h | 72h | 11,808,000 | 11,808,000 |
| 48 | 4.1.3 | یک پارچه سازی و نوشتن نهایی | manual | 3d | 2018-05-21 08:00 A | 2018-05-23 17:00 A | 47 | 100% |  |  |  | Saberi | 24h | 24h | 3,936,000 | 3,936,000 |
| 49 | 4.2 | **تکمیل سناریوی تست** |  | 14d | 2018-05-23 08:00 A | 2018-06-11 17:00 A |  | 100% |  |  |  |  | 128h | 128h | 20,992,000 | 20,992,000 |
| 50 | 4.2.1 | UIتکمیل و تصحیح | manual | 4d | 2018-05-23 08:00 A | 2018-05-28 17:00 A |  | 100% |  |  |  | Kouchakzadeh | 32h | 32h | 5,248,000 | 5,248,000 |

| ID | WBS | Task | Type | Duration | Start | Finish | Predecessors | Complete | Remaining | Actual start | Actual finish | Resources | Work | Actual work | Cost | Actual cost |
| --- | --- | --- | --- | --- | --- | --- | --- | --- | --- | --- | --- | --- | --- | --- | --- | --- |
| 51 | 4.2.2 | **تکمیل و تصحیح تست ها** |  | 11d | 2018-05-28 08:00 A | 2018-06-11 17:00 A |  | 100% |  |  |  |  | 96h | 96h | 15,744,000 | 15,744,000 |
| 52 | 4.2.2.1 | UI آزمایش تست ها بر | manual | 4d | 2018-05-28 08:00 A | 2018-05-31 17:00 A |  | 100% |  |  |  | Moosareza | 32h | 32h | 5,248,000 | 5,248,000 |
| 53 | 4.2.2.2 | اصلاح و تکمیل تست ها | manual | 8d | 2018-05-31 08:00 A | 2018-06-11 17:00 A | 52 | 100% |  |  |  | Saberi | 64h | 64h | 10,496,000 | 10,496,000 |
| 54 | 4.3 | بررسی مجدد و آماده سازی نسخه ی نهایی | manual | 2d | 2018-06-12 08:00 A | 2018-06-13 17:00 A | 45, 49 | 100% |  |  |  | Kouchakzadeh; Moosareza | 32h | 32h | 5,248,000 | 5,248,000 |
| 55 | 4.4 | ارسال نسخه ی نهایی | manual | 1d | 2018-06-13 08:00 A | 2018-06-13 17:00 A |  | 100% |  |  |  | Saberi | 8h | 8h | 1,312,000 | 1,312,000 |
| 56 | 5 | **فاز پنجم** |  | 51d | 2018-06-14 08:00 A | 2018-08-23 17:00 | 44 | 75% | 12.63d |  |  |  | 1176h | 916.8h | 192,864,000 | 150,355,200 |
| 57 | 5.1 | **یادگیری اولیه** |  | 18d | 2018-06-14 08:00 A | 2018-07-10 17:00 |  | 100% |  |  | 2018-07-09 17:00 |  | 600h | 600h | 98,400,000 | 98,400,000 |
| 58 | 5.1.1 | bootstrap یادگیری | manual | 6d | 2018-06-14 08:00 A | 2018-06-21 17:00 A |  | 100% |  |  |  | Kouchakzadeh; Moosareza; Saberi | 144h | 144h | 23,616,000 | 23,616,000 |
| 59 | 5.1.2 | SQLite یادگیری نکات استفاده از | manual | 18d | 2018-06-14 08:00 A | 2018-07-09 17:00 A |  | 100% |  |  |  | Saberi; Kouchakzadeh; Moosareza | 432h | 432h | 70,848,000 | 70,848,000 |
| 60 | 5.1.3 | django یادگیری اولیه | manual | 1d | 2018-06-14 08:00 A | 2018-06-14 17:00 A |  | 100% |  |  |  | Kouchakzadeh; Moosareza; Saberi | 24h | 24h | 3,936,000 | 3,936,000 |
| 61 | 5.2 | **frontend پیاده سازی** |  | 15d | 2018-07-11 08:00 | 2018-08-01 17:00 A | 57 | 100% |  | 2018-07-12 08:00 |  |  | 312h | 312h | 51,168,000 | 51,168,000 |
| 62 | 5.2.1 | **طراحی صفحه ها** |  | 1d | 2018-07-12 08:00 A | 2018-07-27 17:00 A |  | 100% |  |  |  | Kouchakzadeh; Moosareza; Saberi | 288h | 288h | 47,232,000 | 47,232,000 |
| 63 | 5.2.1.1 | home | manual | 1d | 2018-07-12 08:00 A | 2018-07-12 17:00 A |  | 100% |  |  |  |  |  |  |  |  |
| 64 | 5.2.1.2 | contact us | manual | 1d | 2018-07-12 08:00 A | 2018-07-12 17:00 A |  | 100% |  |  |  |  |  |  |  |  |
| 65 | 5.2.1.3 | … (این بخش در فازهای آتی تکمیل می‌شود) | manual | 1d | 2018-07-12 08:00 A | 2018-07-12 17:00 A |  | 100% |  |  |  |  |  |  |  |  |
| 66 | 5.2.2 | افزودن متون و نهایی سازی | manual | 3d | 2018-07-30 08:00 A | 2018-08-01 17:00 A |  | 100% |  |  |  | Saberi | 24h | 24h | 3,936,000 | 3,936,000 |
| 67 | 5.3 | **backend پیاده سازی** |  | 12d | 2018-08-02 08:00 A | 2018-08-20 17:00 | 57 | 10% | 11.7d |  |  |  | 224h | 4.8h | 36,736,000 | 787,200 |
| 68 | 5.3.1 | **پیاده سازی پایگاه داده** |  | 5d | 2018-08-02 08:00 A | 2018-08-08 17:00 |  | 12% | 4.4d |  |  |  | 56h | 4.8h | 9,184,000 | 787,200 |
| 69 | 5.3.1.1 | ER طراحی | manual | 2d | 2018-08-02 08:00 A | 2018-08-03 17:00 |  | 30% | 1.4d |  |  | Moosareza | 16h | 4.8h | 2,624,000 | 787,200 |
| 70 | 5.3.1.2 | طراحی جداول | manual | 1d | 2018-08-06 08:00 | 2018-08-06 17:00 | 69 |  |  |  |  | Kouchakzadeh | 8h |  | 1,312,000 |  |
| 71 | 5.3.1.3 | پیاده‌سازی | manual | 2d | 2018-08-07 08:00 | 2018-08-08 17:00 | 70 |  |  |  |  | Kouchakzadeh; Saberi | 32h |  | 5,248,000 |  |
| 72 | 5.3.2 | **پیاده سازی** |  | 1d | 2018-08-09 08:00 | 2018-08-17 17:00 | 68 |  |  |  |  | Kouchakzadeh; Moosareza; Saberi | 168h |  | 27,552,000 |  |
| 73 | 5.3.2.1 | … (این بخش در فازهای آتی تکمیل می‌شود) | manual | 1d? | 2018-08-09 08:00 | 2018-08-09 17:00 |  |  |  |  |  |  |  |  |  |  |
| 74 | 5.4 | بازبینی و اصلاح نهایی | manual | 3d | 2018-08-21 08:00 | 2018-08-23 17:00 | 67 |  |  |  |  | Kouchakzadeh | 24h |  | 3,936,000 |  |
| 75 | 5.5 | کردن سایت deploy | manual | 2d | 2018-08-22 08:00 | 2018-08-23 17:00 |  |  |  |  |  | Moosareza | 16h |  | 2,624,000 |  |
